# EAP

Schedule from MS Project, 2017-04-28 to 2017-06-15, costs in R$, A marks actual dates.

## Calendars

- Padrão: Mon-Fri 09:00-12:00, 13:00-18:00; Sat-Sun off.

## Resources

| Resource | Rate |
| --- | --- |
| Natan | 5 |
| Tiago | 8 |
| Homero | 5 |

## Schedule

| ID | WBS | Task | Duration | Start | Finish | Predecessors | Complete | Remaining | Baseline start | Baseline finish | Baseline duration | Resources | Work | Actual work | Cost | Baseline cost | Actual cost |
| --- | --- | --- | --- | --- | --- | --- | --- | --- | --- | --- | --- | --- | --- | --- | --- | --- | --- |
| 1 | 1 | **Projeto TalkUniversity** | 34.54d? | 2017-04-28 09:00 A | 2017-06-15 14:20 |  | 47% | 18.47d? | 2017-04-28 09:00 | 2017-06-15 14:20 | 34.54d? |  | 333h | 130.2h | 2,061 | 2,041.5 | 824.8 |
| 2 | 1.1 | **Prospecção** | 1.83d? | 2017-04-28 09:00 A | 2017-05-01 16:40 A |  | 100% |  | 2017-04-28 09:00 | 2017-05-01 16:40 | 1.83d? |  | 16h | 16h | 82 | 82 | 82 |
| 3 | 1.1.1 | **EAP** | 0.88d? | 2017-04-28 09:00 A | 2017-04-28 17:00 A |  | 100% |  | 2017-04-28 09:00 | 2017-04-28 17:00 | 0.88d? |  | 7h | 7h | 35 | 35 | 35 |
| 4 | 1.1.1.1 | Definir Estrutura Projeto | 0.25d? | 2017-04-28 09:00 A | 2017-04-28 11:00 A |  | 100% |  | 2017-04-28 09:00 | 2017-04-28 11:00 | 0.25d? | Natan | 2h | 2h | 10 | 10 | 10 |
| 5 | 1.1.1.2 | Redigir EAP | 0.62d? | 2017-04-28 11:00 A | 2017-04-28 17:00 A | 4 | 100% |  | 2017-04-28 11:00 | 2017-04-28 17:00 | 0.62d? | Natan | 5h | 5h | 25 | 25 | 25 |
| 6 | 1.1.2 | **Proposta Técnica** | 0.96d? | 2017-04-28 17:00 A | 2017-05-01 16:40 A | 5 | 100% |  | 2017-04-28 17:00 | 2017-05-01 16:40 | 0.96d? |  | 9h | 9h | 47 | 47 | 47 |
| 7 | 1.1.2.1 | Reunião para Definição | 0.08d? | 2017-04-28 17:00 A | 2017-04-28 17:40 A |  | 100% |  | 2017-04-28 17:00 | 2017-04-28 17:40 | 0.08d? | Natan; Homero; Tiago | 2h | 2h | 12 | 12 | 12 |
| 8 | 1.1.2.2 | Redigir Proposta Técnica | 0.62d? | 2017-04-28 17:40 A | 2017-05-01 14:40 A | 7 | 100% |  | 2017-04-28 17:40 | 2017-05-01 14:40 | 0.62d? | Homero | 5h | 5h | 25 | 25 | 25 |
| 9 | 1.1.2.3 | Revisar Proposta Técnica | 0.25d? | 2017-05-01 14:40 A | 2017-05-01 16:40 A | 8 | 100% |  | 2017-05-01 14:40 | 2017-05-01 16:40 | 0.25d? | Homero | 2h | 2h | 10 | 10 | 10 |
| 10 | 1.2 | **Análise** | 7.08d? | 2017-05-01 16:40 A | 2017-05-10 17:20 A | 9 | 100% |  | 2017-05-01 16:40 | 2017-05-10 17:20 | 7.08d? |  | 58h | 58h | 346 | 346 | 346 |
| 11 | 1.2.1 | **Documento de Requisitos** | 2.58d? | 2017-05-01 16:40 A | 2017-05-04 13:20 A |  | 100% |  | 2017-05-01 16:40 | 2017-05-04 13:20 | 2.58d? |  | 22h | 22h | 166 | 166 | 166 |
| 12 | 1.2.1.1 | Reunião Definitiva para definição | 0.08d? | 2017-05-01 16:40 A | 2017-05-01 17:20 A |  | 100% |  | 2017-05-01 16:40 | 2017-05-01 17:20 | 0.08d? | Natan; Homero; Tiago | 2h | 2h | 12 | 12 | 12 |
| 13 | 1.2.1.2 | Redigir Documento de Requisitos | 2.25d? | 2017-05-01 17:20 A | 2017-05-04 10:20 A | 12 | 100% |  | 2017-05-01 17:20 | 2017-05-04 10:20 | 2.25d? | Tiago | 18h | 18h | 144 | 144 | 144 |
| 14 | 1.2.1.3 | Revisar Documento de Requisitos | 0.25d? | 2017-05-04 10:20 A | 2017-05-04 13:20 A | 13 | 100% |  | 2017-05-04 10:20 | 2017-05-04 13:20 | 0.25d? | Natan | 2h | 2h | 10 | 10 | 10 |
| 15 | 1.2.2 | **Estimativa de Tamanho Preliminar** | 2d? | 2017-05-04 13:20 A | 2017-05-08 13:20 A | 14 | 100% |  | 2017-05-04 13:20 | 2017-05-08 13:20 | 2d? |  | 16h | 16h | 80 | 80 | 80 |
| 16 | 1.2.2.1 | Analisar DRE | 0.25d? | 2017-05-04 13:20 A | 2017-05-04 15:20 A |  | 100% |  | 2017-05-04 13:20 | 2017-05-04 15:20 | 0.25d? | Homero | 2h | 2h | 10 | 10 | 10 |
| 17 | 1.2.2.2 | Redigir Estimativa | 1.5d? | 2017-05-04 15:20 A | 2017-05-08 10:20 A | 16 | 100% |  | 2017-05-04 15:20 | 2017-05-08 10:20 | 1.5d? | Homero | 12h | 12h | 60 | 60 | 60 |
| 18 | 1.2.2.3 | Revisar Estimativa | 0.25d? | 2017-05-08 10:20 A | 2017-05-08 13:20 A | 17 | 100% |  | 2017-05-08 10:20 | 2017-05-08 13:20 | 0.25d? | Natan | 2h | 2h | 10 | 10 | 10 |
| 19 | 1.2.3 | **Cronograma Preliminar** | 2.5d? | 2017-05-08 13:20 A | 2017-05-10 17:20 A | 18 | 100% |  | 2017-05-08 13:20 | 2017-05-10 17:20 | 2.5d? |  | 20h | 20h | 100 | 100 | 100 |
| 20 | 1.2.3.1 | Analisar Estimativa | 0.25d? | 2017-05-08 13:20 A | 2017-05-08 15:20 A |  | 100% |  | 2017-05-08 13:20 | 2017-05-08 15:20 | 0.25d? | Natan | 2h | 2h | 10 | 10 | 10 |
| 21 | 1.2.3.2 | Definir Responsáveis pelas Tarefas | 0.75d? | 2017-05-08 15:20 A | 2017-05-09 13:20 A | 20 | 100% |  | 2017-05-08 15:20 | 2017-05-09 13:20 | 0.75d? | Natan | 6h | 6h | 30 | 30 | 30 |
| 22 | 1.2.3.3 | Gerar Cronograma | 1.5d? | 2017-05-09 13:20 A | 2017-05-10 17:20 A | 21 | 100% |  | 2017-05-09 13:20 | 2017-05-10 17:20 | 1.5d? | Natan | 12h | 12h | 60 | 60 | 60 |
| 23 | 1.3 | **Projeto** | 1.75d? | 2017-05-10 17:20 A | 2017-05-12 15:20 A | 22 | 100% |  | 2017-05-10 17:20 | 2017-05-12 15:20 | 1.75d? |  | 14h | 14h | 70 | 70 | 70 |
| 24 | 1.3.1 | **MRB** | 1.75d? | 2017-05-10 17:20 A | 2017-05-12 15:20 A |  | 100% |  | 2017-05-10 17:20 | 2017-05-12 15:20 | 1.75d? |  | 14h | 14h | 70 | 70 | 70 |
| 25 | 1.3.1.1 | Revisar Requisitos | 0.25d? | 2017-05-10 17:20 A | 2017-05-11 10:20 A |  | 100% |  | 2017-05-10 17:20 | 2017-05-11 10:20 | 0.25d? | Natan | 2h | 2h | 10 | 10 | 10 |
| 26 | 1.3.1.2 | Redigir MRB | 1.25d? | 2017-05-11 10:20 A | 2017-05-12 13:20 A | 25 | 100% |  | 2017-05-11 10:20 | 2017-05-12 13:20 | 1.25d? | Natan | 10h | 10h | 50 | 50 | 50 |
| 27 | 1.3.1.3 | Revisar MRB | 0.25d? | 2017-05-12 13:20 A | 2017-05-12 15:20 A | 26 | 100% |  | 2017-05-12 13:20 | 2017-05-12 15:20 | 0.25d? | Natan | 2h | 2h | 10 | 10 | 10 |

| ID | WBS | Task | Duration | Start | Finish | Predecessors | Complete | Remaining | Baseline start | Baseline finish | Baseline duration | Total slack | Free slack | Constraint | Resources | Work | Actual work | Cost | Baseline cost | Actual cost |
| --- | --- | --- | --- | --- | --- | --- | --- | --- | --- | --- | --- | --- | --- | --- | --- | --- | --- | --- | --- | --- |
| 28 | 1.4 | **Release 1** | 11.1d? | 2017-05-12 15:20 A | 2017-05-29 16:10 | 27 | 67% | 3.63d? | 2017-05-12 15:20 | 2017-05-29 14:40 | 10.92d? | 12.77d |  |  |  | 69h | 42.2h | 496 | 476.5 | 326.8 |
| 29 | 1.4.1 | **Planejamento** | 0.92d? | 2017-05-12 15:20 | 2017-05-15 14:40 |  |  |  | 2017-05-12 15:20 | 2017-05-15 14:40 | 0.92d? | 0d |  |  |  | 8h |  | 41 | 41 |  |
| 30 | 1.4.1.1 | **Estimativa Tamanho Definitivo** | 0.42d? | 2017-05-12 15:20 | 2017-05-15 09:40 |  |  |  | 2017-05-12 15:20 | 2017-05-15 09:40 | 0.42d? | 0d |  |  |  | 4h |  | 21 | 21 |  |
| 31 | 1.4.1.1.1 | Reunião de Definição | 0.04d? | 2017-05-12 15:20 | 2017-05-12 15:40 |  |  |  | 2017-05-12 15:20 | 2017-05-12 15:40 | 0.04d? | 0d |  |  | Natan; Homero; Tiago | 1h |  | 6 | 6 |  |
| 32 | 1.4.1.1.2 | Redigir Estimativa Definitiva | 0.25d? | 2017-05-12 15:40 | 2017-05-12 17:40 | 31 |  |  | 2017-05-12 15:40 | 2017-05-12 17:40 | 0.25d? | 0d |  |  | Homero | 2h |  | 10 | 10 |  |
| 33 | 1.4.1.1.3 | Revisar Estimativa Definitiva | 0.12d? | 2017-05-12 17:40 | 2017-05-15 09:40 | 32 |  |  | 2017-05-12 17:40 | 2017-05-15 09:40 | 0.12d? | 0d |  |  | Homero | 1h |  | 5 | 5 |  |
| 34 | 1.4.1.2 | **Cronograma Definitivo** | 0.25d? | 2017-05-15 09:40 | 2017-05-15 11:40 | 33 |  |  | 2017-05-15 09:40 | 2017-05-15 11:40 | 0.25d? | 0d |  |  |  | 2h |  | 10 | 10 |  |
| 35 | 1.4.1.2.1 | Alterar Cronograma Preliminar | 0.12d? | 2017-05-15 09:40 | 2017-05-15 10:40 |  |  |  | 2017-05-15 09:40 | 2017-05-15 10:40 | 0.12d? | 0d |  |  | Natan | 1h |  | 5 | 5 |  |
| 36 | 1.4.1.2.2 | Revisar Cronograma Definitivo | 0.12d? | 2017-05-15 10:40 | 2017-05-15 11:40 | 35 |  |  | 2017-05-15 10:40 | 2017-05-15 11:40 | 0.12d? | 0d |  |  | Natan | 1h |  | 5 | 5 |  |
| 37 | 1.4.1.3 | **Plano de projeto** | 0.25d? | 2017-05-15 11:40 | 2017-05-15 14:40 | 36 |  |  | 2017-05-15 11:40 | 2017-05-15 14:40 | 0.25d? | 0d |  |  |  | 2h |  | 10 | 10 |  |
| 38 | 1.4.1.3.1 | Redigir Plano de Projeto | 0.12d? | 2017-05-15 11:40 | 2017-05-15 13:40 |  |  |  | 2017-05-15 11:40 | 2017-05-15 13:40 | 0.12d? | 0d |  |  | Homero | 1h |  | 5 | 5 |  |
| 39 | 1.4.1.3.2 | Revisar Plano de Projeto | 0.12d? | 2017-05-15 13:40 | 2017-05-15 14:40 | 38 |  |  | 2017-05-15 13:40 | 2017-05-15 14:40 | 0.12d? | 0d |  |  | Natan | 1h |  | 5 | 5 |  |
| 40 | 1.4.2 | **Desenvolvimento** | 5.5d? | 2017-05-15 14:40 A | 2017-05-23 09:40 | 39 | 88% | 0.68d? | 2017-05-15 14:40 | 2017-05-22 17:10 | 5.31d? | -0.19d | 0d |  |  | 53h | 42.2h | 397 | 377.5 | 326.8 |
| 41 | 1.4.2.1 | Configurar Conexão com Firebase | 1.38d? | 2017-05-15 14:40 A | 2017-05-16 17:40 A |  | 100% |  | 2017-05-15 14:40 | 2017-05-16 17:40 | 1.38d? |  |  |  | Tiago | 11h | 11h | 88 | 88 | 88 |
| 42 | 1.4.2.2 | RF04 - Criar Usuário | 0.88d? | 2017-05-16 17:40 A | 2017-05-17 16:40 A | 41 | 100% |  | 2017-05-16 17:40 | 2017-05-17 16:40 | 0.88d? |  |  |  | Tiago | 7h | 7h | 56 | 56 | 56 |
| 43 | 1.4.2.3 | RF05 - Deletar Usuário | 0.62d? | 2017-05-17 16:40 A | 2017-05-18 13:40 A | 42 | 100% |  | 2017-05-17 16:40 | 2017-05-18 13:40 | 0.62d? |  |  |  | Tiago | 5h | 5h | 40 | 40 | 40 |
| 44 | 1.4.2.4 | RF06 - Editar Usuário | 0.62d? | 2017-05-18 13:40 A | 2017-05-19 09:40 A | 43 | 100% |  | 2017-05-18 13:40 | 2017-05-19 09:40 | 0.62d? |  |  |  | Tiago | 5h | 5h | 40 | 40 | 40 |
| 45 | 1.4.2.5 | RF01 - Criar Grupo | 0.88d? | 2017-05-19 09:40 A | 2017-05-19 17:40 A | 44 | 100% |  | 2017-05-19 09:40 | 2017-05-19 17:40 | 0.88d? |  |  |  | Tiago | 7h | 7h | 56 | 56 | 56 |
| 46 | 1.4.2.6 | RF03 - Editar Grupo | 0.5d? | 2017-05-19 17:40 A | 2017-05-22 13:40 | 45 | 90% | 0.05d? | 2017-05-19 17:40 | 2017-05-22 11:10 | 0.31d? | -0.19d | 0d |  | Natan; Tiago | 8h | 7.2h | 52 | 32.5 | 46.8 |
| 47 | 1.4.2.7 | RF02 - Remover Grupo | 0.31d? | 2017-05-22 13:40 | 2017-05-22 16:10 | 46 |  |  | 2017-05-22 11:10 | 2017-05-22 14:40 | 0.31d? | -0.19d | 0d |  | Natan; Tiago | 5h |  | 32.5 | 32.5 |  |
| 48 | 1.4.2.8 | RF12 - Visualizar Grupo | 0.31d? | 2017-05-22 16:10 | 2017-05-23 09:40 | 47 |  |  | 2017-05-22 14:40 | 2017-05-22 17:10 | 0.31d? | -0.19d | 0d |  | Natan; Tiago | 5h |  | 32.5 | 32.5 |  |
| 49 | 1.4.3 | **Testes** | 8.81d? | 2017-05-16 17:40 | 2017-05-29 16:10 |  |  |  | 2017-05-16 17:40 | 2017-05-29 14:40 | 8.62d? | 3.94d |  |  |  | 8h |  | 58 | 58 |  |
| 50 | 1.4.3.1 | Testar Conexão Firebase | 0.5d? | 2017-05-16 17:40 | 2017-05-17 13:40 | 41 |  |  | 2017-05-16 17:40 | 2017-05-17 13:40 | 0.5d? | 21.08d |  |  | Tiago | 4h |  | 32 | 32 |  |
| 51 | 1.4.3.2 | Testar RFs | 0.25d? | 2017-05-23 09:40 | 2017-05-29 16:10 | 48 |  |  | 2017-05-22 17:10 | 2017-05-29 14:40 | 0.25d? | -0.19d | 0d | finish no earlier than 2017-05-22 18:00 | Tiago; Natan | 4h |  | 26 | 26 |  |

| ID | WBS | Task | Duration | Start | Finish | Predecessors | Baseline start | Baseline finish | Baseline duration | Total slack | Free slack | Resources | Work | Cost | Baseline cost |
| --- | --- | --- | --- | --- | --- | --- | --- | --- | --- | --- | --- | --- | --- | --- | --- |
| 52 | 1.5 | **Release 2** | 4.92d? | 2017-05-29 16:10 | 2017-06-05 15:30 | 51 | 2017-05-29 14:40 | 2017-06-05 14:00 | 4.92d? | -0.19d | 0d |  | 66h | 409 | 409 |
| 53 | 1.5.1 | **Planejamento** | 0.92d? | 2017-05-29 16:10 | 2017-05-30 15:30 |  | 2017-05-29 14:40 | 2017-05-30 14:00 | 0.92d? | -0.19d | 0d |  | 8h | 41 | 41 |
| 54 | 1.5.1.1 | **Estimativa Tamanho Definitivo** | 0.42d? | 2017-05-29 16:10 | 2017-05-30 10:30 |  | 2017-05-29 14:40 | 2017-05-29 18:00 | 0.42d? | -0.19d | 0d |  | 4h | 21 | 21 |
| 55 | 1.5.1.1.1 | Reunião de Definição | 0.04d? | 2017-05-29 16:10 | 2017-05-29 16:30 |  | 2017-05-29 14:40 | 2017-05-29 15:00 | 0.04d? | -0.19d | 0d | Natan; Homero; Tiago | 1h | 6 | 6 |
| 56 | 1.5.1.1.2 | Redigir Estimativa Definitiva | 0.25d? | 2017-05-29 16:30 | 2017-05-30 09:30 | 55 | 2017-05-29 15:00 | 2017-05-29 17:00 | 0.25d? | -0.19d | 0d | Homero | 2h | 10 | 10 |
| 57 | 1.5.1.1.3 | Revisar Estimativa Definitiva | 0.12d? | 2017-05-30 09:30 | 2017-05-30 10:30 | 56 | 2017-05-29 17:00 | 2017-05-29 18:00 | 0.12d? | -0.19d | 0d | Homero | 1h | 5 | 5 |
| 58 | 1.5.1.2 | **Cronograma Definitivo** | 0.25d? | 2017-05-30 10:30 | 2017-05-30 13:30 | 57 | 2017-05-30 09:00 | 2017-05-30 11:00 | 0.25d? | -0.19d | 0d |  | 2h | 10 | 10 |
| 59 | 1.5.1.2.1 | Alterar Cronograma Preliminar | 0.12d? | 2017-05-30 10:30 | 2017-05-30 11:30 |  | 2017-05-30 09:00 | 2017-05-30 10:00 | 0.12d? | -0.19d | 0d | Natan | 1h | 5 | 5 |
| 60 | 1.5.1.2.2 | Revisar Cronograma Definitivo | 0.12d? | 2017-05-30 11:30 | 2017-05-30 13:30 | 59 | 2017-05-30 10:00 | 2017-05-30 11:00 | 0.12d? | -0.19d | 0d | Natan | 1h | 5 | 5 |
| 61 | 1.5.1.3 | **Plano de projeto** | 0.25d? | 2017-05-30 13:30 | 2017-05-30 15:30 | 60 | 2017-05-30 11:00 | 2017-05-30 14:00 | 0.25d? | -0.19d | 0d |  | 2h | 10 | 10 |
| 62 | 1.5.1.3.1 | Redigir Plano de Projeto | 0.12d? | 2017-05-30 13:30 | 2017-05-30 14:30 |  | 2017-05-30 11:00 | 2017-05-30 12:00 | 0.12d? | -0.19d | 0d | Homero | 1h | 5 | 5 |
| 63 | 1.5.1.3.2 | Revisar Plano de Projeto | 0.12d? | 2017-05-30 14:30 | 2017-05-30 15:30 | 62 | 2017-05-30 13:00 | 2017-05-30 14:00 | 0.12d? | -0.19d | 0d | Natan | 1h | 5 | 5 |
| 64 | 1.5.2 | **Desenvolvimento** | 3.25d? | 2017-05-30 15:30 | 2017-06-02 17:30 | 63 | 2017-05-30 14:00 | 2017-06-02 16:00 | 3.25d? | -0.19d | 0d |  | 52h | 338 | 338 |
| 65 | 1.5.2.1 | RF14 - Editar Administrador do Grupo | 0.38d? | 2017-05-30 15:30 | 2017-05-31 09:30 |  | 2017-05-30 14:00 | 2017-05-30 17:00 | 0.38d? | -0.19d | 0d | Natan; Tiago | 6h | 39 | 39 |
| 66 | 1.5.2.2 | RF16 - Adicionar Instituição | 0.5d? | 2017-05-31 09:30 | 2017-05-31 14:30 | 65 | 2017-05-30 17:00 | 2017-05-31 12:00 | 0.5d? | -0.19d | 0d | Natan; Tiago | 8h | 52 | 52 |
| 67 | 1.5.2.3 | RF17 - Editar Instituição | 0.38d? | 2017-05-31 14:30 | 2017-05-31 17:30 | 66 | 2017-05-31 13:00 | 2017-05-31 16:00 | 0.38d? | -0.19d | 0d | Natan; Tiago | 6h | 39 | 39 |
| 68 | 1.5.2.4 | RF18 - Buscar Instituição | 0.38d? | 2017-05-31 17:30 | 2017-06-01 11:30 | 67 | 2017-05-31 16:00 | 2017-06-01 10:00 | 0.38d? | -0.19d | 0d | Natan; Tiago | 6h | 39 | 39 |
| 69 | 1.5.2.5 | RF23 - Criar Aulas | 0.5d? | 2017-06-01 11:30 | 2017-06-01 16:30 | 68 | 2017-06-01 10:00 | 2017-06-01 15:00 | 0.5d? | -0.19d | 0d | Natan; Tiago | 8h | 52 | 52 |
| 70 | 1.5.2.6 | RF24 - Visualizar Aulas | 0.38d? | 2017-06-01 16:30 | 2017-06-02 10:30 | 69 | 2017-06-01 15:00 | 2017-06-01 18:00 | 0.38d? | -0.19d | 0d | Natan; Tiago | 6h | 39 | 39 |
| 71 | 1.5.2.7 | RF25 - Remover Aulas | 0.38d? | 2017-06-02 10:30 | 2017-06-02 14:30 | 70 | 2017-06-02 09:00 | 2017-06-02 12:00 | 0.38d? | -0.19d | 0d | Natan; Tiago | 6h | 39 | 39 |
| 72 | 1.5.2.8 | RF26 - Editar Aulas | 0.38d? | 2017-06-02 14:30 | 2017-06-02 17:30 | 71 | 2017-06-02 13:00 | 2017-06-02 16:00 | 0.38d? | -0.19d | 0d | Natan; Tiago | 6h | 39 | 39 |
| 73 | 1.5.3 | **Testes** | 0.75d? | 2017-06-02 17:30 | 2017-06-05 15:30 | 72 | 2017-06-02 16:00 | 2017-06-05 14:00 | 0.75d? | -0.19d | 0d |  | 6h | 30 | 30 |
| 74 | 1.5.3.1 | Testar RFs | 0.75d? | 2017-06-02 17:30 | 2017-06-05 15:30 |  | 2017-06-02 16:00 | 2017-06-05 14:00 | 0.75d? | -0.19d | 0d | Homero | 6h | 30 | 30 |
| 75 | 1.6 | **Release 3** | 6.04d? | 2017-06-05 15:30 | 2017-06-13 15:50 | 74 | 2017-06-05 14:00 | 2017-06-13 14:20 | 6.04d? | -0.19d | 0d |  | 86h | 526 | 526 |
| 76 | 1.6.1 | **Planejamento** | 2.67d? | 2017-06-05 15:30 | 2017-06-08 11:50 |  | 2017-06-05 14:00 | 2017-06-08 10:20 | 2.67d? | -0.19d | 0d |  | 8h | 31 | 31 |
| 77 | 1.6.1.1 | **Estimativa Tamanho Definitivo** | 0.42d? | 2017-06-05 15:30 | 2017-06-06 09:50 |  | 2017-06-05 14:00 | 2017-06-05 17:20 | 0.42d? | -0.19d | 0d |  | 4h | 21 | 21 |
| 78 | 1.6.1.1.1 | Reunião de Definição | 0.04d? | 2017-06-05 15:30 | 2017-06-05 15:50 |  | 2017-06-05 14:00 | 2017-06-05 14:20 | 0.04d? | -0.19d | 0d | Homero; Natan; Tiago | 1h | 6 | 6 |
| 79 | 1.6.1.1.2 | Redigir Estimativa Definitiva | 0.25d? | 2017-06-05 15:50 | 2017-06-05 17:50 | 78 | 2017-06-05 14:20 | 2017-06-05 16:20 | 0.25d? | -0.19d | 0d | Homero | 2h | 10 | 10 |
| 80 | 1.6.1.1.3 | Revisar Estimativa Definitiva | 0.12d? | 2017-06-05 17:50 | 2017-06-06 09:50 | 79 | 2017-06-05 16:20 | 2017-06-05 17:20 | 0.12d? | -0.19d | 0d | Homero | 1h | 5 | 5 |

| ID | WBS | Task | Duration | Start | Finish | Predecessors | Baseline start | Baseline finish | Baseline duration | Total slack | Free slack | Resources | Work | Cost | Baseline cost |
| --- | --- | --- | --- | --- | --- | --- | --- | --- | --- | --- | --- | --- | --- | --- | --- |
| 81 | 1.6.1.2 | **Cronograma Definitivo** | 0.25d? | 2017-06-06 09:50 | 2017-06-06 11:50 | 80 | 2017-06-05 17:20 | 2017-06-06 10:20 | 0.25d? | -0.19d | 0d |  | 2h | 10 | 10 |
| 82 | 1.6.1.2.1 | Alterar Cronograma Preliminar | 0.12d? | 2017-06-06 09:50 | 2017-06-06 10:50 |  | 2017-06-05 17:20 | 2017-06-06 09:20 | 0.12d? | -0.19d | 0d | Homero | 1h | 5 | 5 |
| 83 | 1.6.1.2.2 | Revisar Cronograma Definitivo | 0.12d? | 2017-06-06 10:50 | 2017-06-06 11:50 | 82 | 2017-06-06 09:20 | 2017-06-06 10:20 | 0.12d? | -0.19d | 0d | Homero | 1h | 5 | 5 |
| 84 | 1.6.1.3 | **Plano de projeto** | 2d? | 2017-06-06 11:50 | 2017-06-08 11:50 | 83 | 2017-06-06 10:20 | 2017-06-08 10:20 | 2d? | 5.19d |  |  | 2h |  |  |
| 85 | 1.6.1.3.1 | Redigir plano de projeto | 1d? | 2017-06-06 11:50 | 2017-06-07 11:50 |  | 2017-06-06 10:20 | 2017-06-07 10:20 | 1d? | 5.19d | 0d |  | 1h |  |  |
| 86 | 1.6.1.3.2 | Revisar Plano de projeto | 1d? | 2017-06-07 11:50 | 2017-06-08 11:50 | 85 | 2017-06-07 10:20 | 2017-06-08 10:20 | 1d? | 5.19d |  |  | 1h |  |  |
| 87 | 1.6.2 | **Desenvolvimento** | 4.38d? | 2017-06-06 11:50 | 2017-06-12 15:50 | 83 | 2017-06-06 10:20 | 2017-06-12 14:20 | 4.38d? | -0.19d | 0d |  | 70h | 455 | 455 |
| 88 | 1.6.2.1 | RF07 - Criar Conversa | 1d? | 2017-06-06 11:50 | 2017-06-07 11:50 |  | 2017-06-06 10:20 | 2017-06-07 10:20 | 1d? | -0.19d | 0d | Natan; Tiago | 16h | 104 | 104 |
| 89 | 1.6.2.2 | RF13 - Visualizar Conversa | 0.31d? | 2017-06-07 11:50 | 2017-06-07 15:20 | 88 | 2017-06-07 10:20 | 2017-06-07 13:50 | 0.31d? | -0.19d | 0d | Natan; Tiago | 5h | 32.5 | 32.5 |
| 90 | 1.6.2.3 | RF08 - Criar Convite | 0.44d? | 2017-06-07 15:20 | 2017-06-08 09:50 | 89 | 2017-06-07 13:50 | 2017-06-07 17:20 | 0.44d? | -0.19d | 0d | Natan; Tiago | 7h | 45.5 | 45.5 |
| 91 | 1.6.2.4 | RF09 - Rejeitar Convite | 0.31d? | 2017-06-08 09:50 | 2017-06-08 13:20 | 90 | 2017-06-07 17:20 | 2017-06-08 10:50 | 0.31d? | -0.19d | 0d | Natan; Tiago | 5h | 32.5 | 32.5 |
| 92 | 1.6.2.5 | RF10 - Aceitar Convite | 0.31d? | 2017-06-08 13:20 | 2017-06-08 15:50 | 91 | 2017-06-08 10:50 | 2017-06-08 14:20 | 0.31d? | -0.19d | 0d | Natan; Tiago | 5h | 32.5 | 32.5 |
| 93 | 1.6.2.6 | RF11 - Revogar Convite | 0.31d? | 2017-06-08 15:50 | 2017-06-09 09:20 | 92 | 2017-06-08 14:20 | 2017-06-08 16:50 | 0.31d? | -0.19d | 0d | Natan; Tiago | 5h | 32.5 | 32.5 |
| 94 | 1.6.2.7 | RF15 - Compartilhar Mídia | 0.31d? | 2017-06-09 09:20 | 2017-06-09 11:50 | 93 | 2017-06-08 16:50 | 2017-06-09 10:20 | 0.31d? | -0.19d | 0d | Natan; Tiago | 5h | 32.5 | 32.5 |
| 95 | 1.6.2.8 | RF19 - Criar Enquete | 0.44d? | 2017-06-09 11:50 | 2017-06-09 16:20 | 94 | 2017-06-09 10:20 | 2017-06-09 14:50 | 0.44d? | -0.19d | 0d | Natan; Tiago | 7h | 45.5 | 45.5 |
| 96 | 1.6.2.9 | RF20 - Visualizar Enquete | 0.31d? | 2017-06-09 16:20 | 2017-06-12 09:50 | 95 | 2017-06-09 14:50 | 2017-06-09 17:20 | 0.31d? | -0.19d | 0d | Natan; Tiago | 5h | 32.5 | 32.5 |
| 97 | 1.6.2.10 | RF21 - Remover Enquete | 0.31d? | 2017-06-12 09:50 | 2017-06-12 13:20 | 96 | 2017-06-09 17:20 | 2017-06-12 10:50 | 0.31d? | -0.19d | 0d | Natan; Tiago | 5h | 32.5 | 32.5 |
| 98 | 1.6.2.11 | RF22 - Editar Enquete | 0.31d? | 2017-06-12 13:20 | 2017-06-12 15:50 | 97 | 2017-06-12 10:50 | 2017-06-12 14:20 | 0.31d? | -0.19d | 0d | Natan; Tiago | 5h | 32.5 | 32.5 |
| 99 | 1.6.3 | **Testes** | 1d? | 2017-06-12 15:50 | 2017-06-13 15:50 | 98 | 2017-06-12 14:20 | 2017-06-13 14:20 | 1d? | -0.19d | 0d |  | 8h | 40 | 40 |
| 100 | 1.6.3.1 | Testar RFs | 1d? | 2017-06-12 15:50 | 2017-06-13 15:50 |  | 2017-06-12 14:20 | 2017-06-13 14:20 | 1d? | -0.19d | 0d | Homero | 8h | 40 | 40 |
| 101 | 1.7 | **Fechamento** | 2d? | 2017-06-13 15:50 | 2017-06-15 15:50 | 100 | 2017-06-13 14:20 | 2017-06-15 14:20 | 2d? | -0.19d | 0d |  | 24h | 132 | 132 |
| 102 | 1.7.1 | Publicar Aplicativo | 0.5d? | 2017-06-13 15:50 | 2017-06-14 10:50 |  | 2017-06-13 14:20 | 2017-06-14 09:20 | 0.5d? | 1.31d |  | Natan; Tiago | 8h | 52 | 52 |
| 103 | 1.7.2 | Relatório Lições Aprendidas | 1d? | 2017-06-13 15:50 | 2017-06-14 15:50 |  | 2017-06-13 14:20 | 2017-06-14 14:20 | 1d? | -0.19d | 0d | Homero | 8h | 40 | 40 |
| 104 | 1.7.3 | Atualizar Experiências Prévias | 1d? | 2017-06-14 15:50 | 2017-06-15 15:50 | 103 | 2017-06-14 14:20 | 2017-06-15 14:20 | 1d? | -0.19d | 0d | Homero | 8h | 40 | 40 |
